# Ms-Project v2

Schedule from MS Project, 2014-08-01 to 2014-11-13, costs in S/., A marks actual dates.
Luffi

## Calendars

- Estándar: Mon-Fri 09:00-13:00, 15:00-19:00; Sat-Sun off.

## Resources

| Resource | Rate |
| --- | --- |
| Jefe de Proyecto | 15 |
| Laptop 1 |  |
| Diseñador | 5 |
| Programador | 15 |
| Analista1 | 15 |
| Analista2 | 15 |
| Lider Tecnico | 15 |
| Laptop2 |  |
| Movil |  |

## Schedule

| ID | WBS | Task | Duration | Start | Finish | Predecessors | Complete | Actual finish | Baseline start | Baseline finish | Baseline duration | Constraint | Resources | Work | Actual work | Cost | Baseline cost | Actual cost |
| --- | --- | --- | --- | --- | --- | --- | --- | --- | --- | --- | --- | --- | --- | --- | --- | --- | --- | --- |
| 1 | 1 | **INGENIERIA DE SW-2** | 75d | 2014-08-01 06:00 A | 2014-11-13 19:00 |  | 100% | 2014-11-12 19:00 | 2014-08-01 06:00 | 2014-09-08 12:00 | 26.38d |  |  | 658.55h | 658.55h | 8,948.18 | 3,503.18 | 8,948.18 |
| 2 | 1.1 | **Gestion del Proyecto** | 75d | 2014-08-01 06:00 A | 2014-11-13 19:00 |  | 100% | 2014-11-12 19:00 | 2014-08-01 06:00 | 2014-09-08 12:00 | 26.38d |  |  | 125.5h | 125.5h | 1,732.5 | 1,732.5 | 1,732.5 |
| 3 | 1.1.1 | **Planificacion del Proyecto** | 19.12d | 2014-08-01 06:00 A | 2014-08-28 10:00 A |  | 100% |  | 2014-08-01 06:00 | 2014-08-28 10:00 | 19.12d |  |  | 64h | 64h | 890 | 890 | 890 |
| 4 | 1.1.1.1 | Acta de Reunion1 | 0.12d | 2014-08-01 06:00 A | 2014-08-01 10:00 A |  | 100% |  | 2014-08-01 06:00 | 2014-08-01 10:00 | 0.12d |  | Jefe de Proyecto; Lider Tecnico; Analista1; Analista2; Diseñador; Laptop 1; Programador | 2h | 2h | 30 | 30 | 30 |
| 5 | 1.1.1.2 | Acta de Reunion 2 | 1h | 2014-08-05 06:00 A | 2014-08-05 10:00 A | 4 | 100% |  | 2014-08-05 06:00 | 2014-08-05 10:00 | 1h |  | Jefe de Proyecto; Lider Tecnico; Analista1; Analista2; Diseñador; Laptop 1; Programador | 6h | 6h | 80 | 80 | 80 |
| 6 | 1.1.1.3 | Enunciado de Trabajo | 2h | 2014-08-05 06:00 A | 2014-08-05 11:00 A | 4 | 100% |  | 2014-08-05 06:00 | 2014-08-05 11:00 | 2h | finish no earlier than 2014-08-14 23:30 | Jefe de Proyecto; Lider Tecnico; Analista1; Analista2; Laptop 1 | 4h | 4h | 60 | 60 | 60 |
| 7 | 1.1.1.4 | Acta de Reunion 3 | 2h | 2014-08-08 06:00 A | 2014-08-08 08:00 A | 5 | 100% |  | 2014-08-08 06:00 | 2014-08-08 08:00 | 2h |  | Jefe de Proyecto; Lider Tecnico; Analista1; Analista2; Diseñador; Laptop 1; Programador | 12h | 12h | 160 | 160 | 160 |
| 8 | 1.1.1.5 | Plan de Proyecto | 5h | 2014-08-12 09:00 A | 2014-08-22 23:30 A | 6 | 100% |  | 2014-08-12 09:00 | 2014-08-22 23:30 | 5h | finish no earlier than 2014-08-22 23:30 | Jefe de Proyecto; Lider Tecnico; Analista1; Analista2; Laptop 1 | 10h | 10h | 150 | 150 | 150 |
| 9 | 1.1.1.6 | Acta de Reunion 4 | 2h | 2014-08-12 09:00 A | 2014-08-12 11:00 A | 7 | 100% |  | 2014-08-12 09:00 | 2014-08-12 11:00 | 2h |  | Jefe de Proyecto; Lider Tecnico; Analista1; Analista2; Diseñador; Laptop 1; Programador | 12h | 12h | 160 | 160 | 160 |
| 10 | 1.1.1.7 | Acta de Reunion 5 | 2h | 2014-08-14 09:00 A | 2014-08-14 11:00 A | 9 | 100% |  | 2014-08-14 09:00 | 2014-08-14 11:00 | 2h |  | Analista1; Analista2; Diseñador; Jefe de Proyecto; Laptop 1; Lider Tecnico; Programador | 12h | 12h | 160 | 160 | 160 |
| 11 | 1.1.1.8 | Cronograma de Actividades del Proyecto | 1.5h | 2014-08-19 09:00 A | 2014-08-19 10:30 A | 5 | 100% |  | 2014-08-19 09:00 | 2014-08-19 10:30 | 1.5h | start no earlier than 2014-08-19 06:00 | Jefe de Proyecto; Lider Tecnico | 3h | 3h | 45 | 45 | 45 |
| 12 | 1.1.1.9 | Resultados de Verificacion | 1h | 2014-08-28 06:00 A | 2014-08-28 10:00 A | 9 | 100% |  | 2014-08-28 06:00 | 2014-08-28 10:00 | 1h |  | Jefe de Proyecto; Lider Tecnico | 2h | 2h | 30 | 30 | 30 |
| 13 | 1.1.1.10 | Repositorio del Proyecto | 0.5h | 2014-08-28 06:00 A | 2014-08-28 09:30 A | 12 | 100% |  | 2014-08-28 06:00 | 2014-08-28 09:30 | 0.5h |  | Jefe de Proyecto; Lider Tecnico | 1h | 1h | 15 | 15 | 15 |
| 14 | 1.1.2 | **Ejecucion del Proyecto** | 10.25d | 2014-08-15 09:00 A | 2014-08-29 11:00 A |  | 100% |  | 2014-08-15 09:00 | 2014-08-29 11:00 | 10.25d |  |  | 55.5h | 55.5h | 752.5 | 752.5 | 752.5 |
| 15 | 1.1.2.1 | Acta de Reunion 6 | 2h | 2014-08-15 09:00 A | 2014-08-15 11:00 A | 10 | 100% |  | 2014-08-15 09:00 | 2014-08-15 11:00 | 2h |  | Analista1; Analista2; Diseñador; Jefe de Proyecto; Laptop 1 [200%]; Lider Tecnico; Programador | 12h | 12h | 160 | 160 | 160 |
| 16 | 1.1.2.2 | Acta de Reunion 7 | 2h | 2014-08-19 09:00 A | 2014-08-19 11:00 A | 15 | 100% |  | 2014-08-19 09:00 | 2014-08-19 11:00 | 2h |  | Analista1; Analista2; Diseñador; Jefe de Proyecto; Laptop 1; Lider Tecnico; Programador | 12h | 12h | 160 | 160 | 160 |
| 17 | 1.1.2.3 | Acta de Reunion 8 | 2h | 2014-08-21 09:00 A | 2014-08-21 11:00 A | 16 | 100% |  | 2014-08-21 09:00 | 2014-08-21 11:00 | 2h |  | Analista1; Analista2; Diseñador; Jefe de Proyecto; Lider Tecnico; Programador | 12h | 12h | 160 | 160 | 160 |
| 18 | 1.1.2.4 | Plan de Proyecto | 2h | 2014-08-19 09:00 A | 2014-08-19 11:00 A | 8 | 100% |  | 2014-08-19 09:00 | 2014-08-19 11:00 | 2h |  | Analista1; Jefe de Proyecto; Laptop 1; Lider Tecnico | 6h | 6h | 90 | 90 | 90 |
| 19 | 1.1.2.5 | Repositorio del Proyecto | 0.5h | 2014-08-22 09:00 A | 2014-08-22 09:30 A | 18 | 100% |  | 2014-08-22 09:00 | 2014-08-22 09:30 | 0.5h |  | Lider Tecnico | 0.5h | 0.5h | 7.5 | 7.5 | 7.5 |
| 20 | 1.1.2.6 | Reporte de Avance | 1h | 2014-08-22 09:00 A | 2014-08-22 10:00 A | 19 | 100% |  | 2014-08-22 09:00 | 2014-08-22 10:00 | 1h |  | Lider Tecnico | 1h | 1h | 15 | 15 | 15 |
| 21 | 1.1.2.7 | Acta de Reunion 9 | 2h | 2014-08-29 09:00 A | 2014-08-29 11:00 A | 17 | 100% |  | 2014-08-29 09:00 | 2014-08-29 11:00 | 2h |  | Analista1; Analista2; Diseñador; Jefe de Proyecto; Laptop 1; Lider Tecnico; Programador | 12h | 12h | 160 | 160 | 160 |
| 22 | 1.1.3 | **Evaluacion del Proyecto** | 0.12d | 2014-08-21 09:00 A | 2014-08-21 10:00 A |  | 100% |  | 2014-08-21 09:00 | 2014-08-21 10:00 | 0.12d |  |  | 3h | 3h | 45 | 45 | 45 |
| 23 | 1.1.3.1 | Plan de Proyecto | 1h | 2014-08-21 09:00 A | 2014-08-21 10:00 A | 18 | 100% |  | 2014-08-21 09:00 | 2014-08-21 10:00 | 1h |  | Analista1; Jefe de Proyecto; Lider Tecnico | 3h | 3h | 45 | 45 | 45 |
| 24 | 1.1.4 | **Cierre del Proyecto** | 55d | 2014-08-29 09:00 A | 2014-11-13 19:00 |  | 100% | 2014-11-12 19:00 | 2014-08-29 09:00 | 2014-09-08 12:00 | 6.38d |  |  | 3h | 3h | 45 | 45 | 45 |
| 25 | 1.1.4.1 | Plan de Proyecto | 1h | 2014-08-29 09:00 A | 2014-08-29 10:00 A | 23 | 100% |  | 2014-08-29 09:00 | 2014-08-29 10:00 | 1h |  | Analista1; Jefe de Proyecto; Lider Tecnico | 3h | 3h | 45 | 45 | 45 |
| 26 | 1.1.4.2 | Acta de Aceptación | 1h | 2014-11-12 09:00 A | 2014-11-12 19:00 A |  | 100% |  | 2014-09-08 09:00 | 2014-09-08 12:00 | 3h | finish no earlier than 2014-11-12 19:00 |  |  |  |  |  |  |

| ID | WBS | Task | Type | Duration | Start | Finish | Predecessors | Complete | Actual start | Actual finish | Baseline start | Baseline finish | Baseline duration | Constraint | Resources | Work | Actual work | Cost | Baseline cost | Actual cost |
| --- | --- | --- | --- | --- | --- | --- | --- | --- | --- | --- | --- | --- | --- | --- | --- | --- | --- | --- | --- | --- |
| 27 | 1.2 | **Implementacion del Software** |  | 57d | 2014-08-25 09:00 A | 2014-11-11 19:00 |  | 100% |  | 2014-11-05 11:00 | 2014-08-25 09:00 | 2014-09-02 12:00 | 6.38d |  |  | 533.05h | 533.05h | 7,215.68 | 1,770.68 | 7,215.68 |
| 28 | 1.2.1 | **Inicio de Implementación de Software** |  | 2.12d | 2014-08-26 06:00 A | 2014-08-28 10:00 A |  | 100% |  |  | 2014-08-26 06:00 | 2014-08-28 10:00 | 2.12d |  |  | 5h | 5h | 75 | 75 | 75 |
| 29 | 1.2.1.1 | Plan de Proyecto |  | 1h | 2014-08-26 06:00 A | 2014-08-26 07:00 A | 25 | 100% |  |  | 2014-08-26 06:00 | 2014-08-26 07:00 | 1h |  | Analista1; Jefe de Proyecto; Lider Tecnico | 3h | 3h | 45 | 45 | 45 |
| 30 | 1.2.1.2 | Repositorio del Proyecto |  | 1h | 2014-08-28 09:00 A | 2014-08-28 10:00 A | 29 | 100% |  |  | 2014-08-28 09:00 | 2014-08-28 10:00 | 1h |  | Jefe de Proyecto; Lider Tecnico | 2h | 2h | 30 | 30 | 30 |
| 31 | 1.2.2 | **Análisis de Requisitos de Software** |  | 8.38d | 2014-08-25 09:00 A | 2014-09-04 12:00 A |  | 100% |  |  | 2014-08-25 09:00 | 2014-09-02 12:00 | 6.38d |  |  | 97.05h | 97.05h | 1,455.68 | 1,695.68 | 1,455.68 |
| 32 | 1.2.2.1 | Especificacion de Requerimientos de Software |  | 4h | 2014-08-26 06:00 A | 2014-08-26 12:00 A | 29 | 100% |  |  | 2014-08-26 06:00 | 2014-08-26 12:00 | 6h |  | Analista1; Analista2 | 8h | 8h | 120 | 180 | 120 |
| 33 | 1.2.2.2 | Especificaciones de Caso de Uso |  | 33.5h | 2014-08-25 09:00 A | 2014-08-28 17:30 A | 32 | 100% |  |  | 2014-08-25 09:00 | 2014-08-27 21:30 | 37.1h |  | Analista1; Analista2 | 67h | 67h | 1,005 | 1,335 | 1,005 |
| 34 | 1.2.2.3 | Priorizacion de Caso de Uso |  | 2h | 2014-09-04 09:00 A | 2014-09-04 11:00 A |  | 100% |  |  |  |  |  |  | Analista1; Analista2; Lider Tecnico | 6h | 6h | 90 |  | 90 |
| 35 | 1.2.2.4 | Matriz de Actividads vs Requisitos |  | 3h | 2014-09-04 09:00 A | 2014-09-04 12:00 A |  | 100% |  |  | 2014-09-02 09:00 | 2014-09-02 12:00 | 3h |  | Analista1; Analista2 | 6h | 6h | 90 | 90 | 90 |
| 36 | 1.2.2.5 | Matriz de Requerimientos Adicionales |  | 2h | 2014-08-28 09:00 A | 2014-08-28 11:00 A |  | 100% |  |  |  |  |  |  | Analista1; Analista2 | 4h | 4h | 60 |  | 60 |
| 37 | 1.2.2.6 | Plan de Proyecto |  | 1h | 2014-08-26 06:00 A | 2014-08-26 07:00 A | 29 | 100% |  |  | 2014-08-26 06:00 | 2014-08-26 07:00 | 1h |  | Analista1; Jefe de Proyecto; Lider Tecnico | 3h | 3h | 45 | 45 | 45 |
| 38 | 1.2.2.7 | Repositorio del Proyecto |  | 0.5h | 2014-08-28 06:00 A | 2014-08-28 06:30 A | 35 | 100% |  |  | 2014-08-28 06:00 | 2014-08-28 06:30 | 0.5h |  | Jefe de Proyecto; Lider Tecnico | 1h | 1h | 15 | 15 | 15 |
| 39 | 1.2.2.8 | Resultados de Verificacion |  | 2h | 2014-09-01 09:00 A | 2014-09-01 19:00 A | 35 | 100% |  |  | 2014-09-01 09:00 | 2014-09-01 19:00 | 2h | finish no earlier than 2014-09-01 19:00 | Jefe de Proyecto; Lider Tecnico | 0.05h | 0.05h | 0.68 | 0.68 | 0.68 |
| 40 | 1.2.2.9 | Resultados de Validacion |  | 1h | 2014-09-01 09:00 A | 2014-09-01 10:00 A |  | 100% |  |  | 2014-09-01 09:00 | 2014-09-01 10:00 | 1h |  | Jefe de Proyecto; Lider Tecnico | 2h | 2h | 30 | 30 | 30 |
| 41 | 1.2.3 | **Arquitectura y Diseño Detallado de Software** |  | 72h | 2014-09-06 09:00 | 2014-09-17 19:00 |  | 100% | 2014-09-08 09:00 | 2014-09-16 11:00 |  |  |  |  |  | 210h | 210h | 2,830 | -0 | 2,830 |
| 42 | 1.2.3.1 | Casos de Prueba y Procedimientos de Prueba |  | 10h | 2014-09-08 09:00 A | 2014-09-09 11:00 A |  | 100% |  |  |  |  |  |  | Analista1; Lider Tecnico; Programador; Laptop 1 | 48h | 48h | 720 |  | 720 |
| 43 | 1.2.3.2 | Diseño de Software | manual | 20h | 2014-09-09 09:00 A | 2014-09-11 13:00 A |  | 100% |  |  |  |  |  |  | Analista1; Analista2; Diseñador; Programador; Laptop2 | 128h | 128h | 1,600 |  | 1,600 |
| 44 | 1.2.3.3 | Especificación de Requisito | manual | 5h | 2014-09-12 09:00 A | 2014-09-12 16:00 A |  | 100% |  |  |  |  |  |  | Analista1; Analista2; Jefe de Proyecto; Lider Tecnico | 24h | 24h | 360 |  | 360 |
| 45 | 1.2.3.4 | Registro de Trazabilidad | manual | 2h | 2014-09-15 09:00 A | 2014-09-15 11:00 A |  | 100% |  |  |  |  |  |  | Analista1; Analista2; Jefe de Proyecto | 6h | 6h | 90 |  | 90 |
| 46 | 1.2.3.5 | Resultados de Verificacion | manual | 2h | 2014-09-16 09:00 A | 2014-09-16 11:00 A |  | 100% |  |  |  |  |  |  | Jefe de Proyecto; Lider Tecnico | 4h | 4h | 60 |  | 60 |
| 47 | 1.2.4 | **Construcción de Software** |  | 240h | 2014-09-23 09:00 | 2014-11-01 19:00 |  | 100% | 2014-09-24 09:00 | 2014-10-04 12:00 |  |  |  |  |  | 89h | 89h | 935 | -0 | 935 |
| 48 | 1.2.4.1 | Componentes de Software | manual | 4h | 2014-09-24 09:00 A | 2014-09-24 13:00 A |  | 100% |  |  |  |  |  |  | Diseñador; Laptop 1; Programador | 8h | 8h | 80 |  | 80 |
| 49 | 1.2.4.2 | Diseño de Software | manual | 10h | 2014-09-26 09:00 A | 2014-09-29 11:00 A |  | 100% |  |  |  |  |  |  | Analista1; Diseñador; Laptop2 | 72h | 72h | 720 |  | 720 |
| 50 | 1.2.4.3 | Registro de Trazabilidad | manual | 3h | 2014-10-04 09:00 A | 2014-10-04 12:00 A |  | 100% |  |  |  |  |  |  | Analista1; Analista2; Lider Tecnico | 9h | 9h | 135 |  | 135 |

| ID | WBS | Task | Type | Duration | Start | Finish | Complete | Actual finish | Resources | Work | Actual work | Cost | Baseline cost | Actual cost |
| --- | --- | --- | --- | --- | --- | --- | --- | --- | --- | --- | --- | --- | --- | --- |
| 51 | 1.2.5 | **Integración y Pruebas de Software** |  | 216h | 2014-10-06 09:00 A | 2014-11-11 19:00 | 100% | 2014-10-30 10:00 |  | 122h | 122h | 1,770 | -0 | 1,770 |
| 52 | 1.2.5.1 | Casos de Prueba y Procedimientos de Prueba | manual | 10h | 2014-10-06 09:00 A | 2014-10-07 11:00 A | 100% |  | Analista1; Jefe de Proyecto; Laptop 1; Lider Tecnico; Programador | 64h | 64h | 960 |  | 960 |
| 53 | 1.2.5.2 | Componentes de Software | manual | 3h | 2014-10-09 09:00 A | 2014-10-09 12:00 A | 100% |  | Analista1; Analista2; Diseñador; Programador | 12h | 12h | 150 |  | 150 |
| 54 | 1.2.5.3 | Configuración de Software | manual | 3h | 2014-10-10 09:00 A | 2014-10-10 12:00 A | 100% |  | Analista1; Programador | 6h | 6h | 90 |  | 90 |
| 55 | 1.2.5.4 | Manual de Usuario | manual | 3h | 2014-10-15 09:00 A | 2014-10-15 12:00 A | 100% |  | Analista1; Analista2; Programador | 9h | 9h | 135 |  | 135 |
| 56 | 1.2.5.5 | Manuel de Operacion | manual | 3h | 2014-10-18 09:00 A | 2014-10-18 12:00 A | 100% |  | Analista1; Analista2; Programador | 9h | 9h | 135 |  | 135 |
| 57 | 1.2.5.6 | Registro de Trazabilidad | manual | 2h | 2014-10-20 09:00 A | 2014-10-20 11:00 A | 100% |  | Analista1; Analista2 | 4h | 4h | 60 |  | 60 |
| 58 | 1.2.5.7 | Reporte de Pruebas | manual | 2h | 2014-10-21 09:00 A | 2014-10-21 11:00 A | 100% |  | Analista1; Analista2; Diseñador; Programador; Jefe de Proyecto; Laptop 1; Lider Tecnico | 12h | 12h | 160 |  | 160 |
| 59 | 1.2.5.8 | Resultados de Verificacion | manual | 2h | 2014-10-21 09:00 A | 2014-10-21 11:00 A | 100% |  | Lider Tecnico; Laptop 1; Jefe de Proyecto | 4h | 4h | 60 |  | 60 |
| 60 | 1.2.5.9 | Software | manual | 1h | 2014-10-30 09:00 A | 2014-10-30 10:00 A | 100% |  | Diseñador; Programador | 2h | 2h | 20 |  | 20 |
| 61 | 1.2.6 | **Entrega de Producto** |  | 48h | 2014-11-01 09:00 A | 2014-11-07 19:00 | 100% | 2014-11-05 11:00 |  | 10h | 10h | 150 | -0 | 150 |
| 62 | 1.2.6.1 | Configuración de Software | manual | 2h | 2014-11-01 09:00 A | 2014-11-01 11:00 A | 100% |  | Laptop2; Programador | 2h | 2h | 30 |  | 30 |
| 63 | 1.2.6.2 | Manual de Mantenimiento | manual | 2h | 2014-11-03 09:00 A | 2014-11-03 11:00 A | 100% |  | Analista1; Lider Tecnico | 4h | 4h | 60 |  | 60 |
| 64 | 1.2.6.3 | Resultados de Verificacion | manual | 2h | 2014-11-05 09:00 A | 2014-11-05 11:00 A | 100% |  | Jefe de Proyecto; Laptop2; Lider Tecnico | 4h | 4h | 60 |  | 60 |
